# trabajo final

Schedule from GanttProject, 2021-08-02 to 2022-02-16.
Eloy Caccaviello

## Calendars

- Project calendar: Mon-Fri working; Sat-Sun off.

## Schedule

| ID | WBS | Task | Duration | Start | Finish | Predecessors | Constraint |
| --- | --- | --- | --- | --- | --- | --- | --- |
| 1 | 1 | **Incursion en conceptos referidos a la desagregacion de energia** | 10d | 2021-08-02 | 2021-08-13 |  | start no earlier than 2021-08-02 |
| 2 | 1.1 | Evaluar requerimientos de señales involucradas y cálculos por realizar. | 10d | 2021-08-02 | 2021-08-13 |  |  |
| 3 | 1.2 | Reflejar en un documento resumido los conceptos relevados. | 10d | 2021-08-02 | 2021-08-13 |  |  |
| 4 | 2 | **Estudio y analisis de proyectos similares** | 7d | 2021-08-13 | 2021-08-23 |  |  |
| 5 | 2.1 | Evaluar ventajas y desventajas, funcionales y circuitales. Actualizar documento. | 7d | 2021-08-13 | 2021-08-23 |  |  |
| 6 | 2.2 | Reflejar estado del arte en documento resumido. | 7d | 2021-08-13 | 2021-08-23 |  |  |
| 7 | 3 | **Caracterizacion del proyecto** | 35d | 2021-08-24 | 2021-10-11 | 1, 4 |  |
| 8 | 3.1 | Definir alcance del proyecto | 2d | 2021-08-24 | 2021-08-25 |  |  |
| 9 | 3.2 | Definicion caracteristicas proyecto | 3d | 2021-08-26 | 2021-08-30 | 8 |  |
| 10 | 3.3 | Armado presentacion formal del proyecto | 30d | 2021-08-31 | 2021-10-11 | 9 |  |
| 11 | 4 | **Diseño circuital** | 29d | 2021-08-31 | 2021-10-08 |  |  |
| 12 | 4.1 | **Diseño filtro antialiasing** | 7d | 2021-08-31 | 2021-09-08 | 9 |  |
| 13 | 4.1.1 | estudio de filtros | 2d | 2021-08-31 | 2021-09-01 |  |  |
| 14 | 4.1.2 | definicion de requerimientos | 1d | 2021-09-02 | 2021-09-02 | 13 |  |
| 15 | 4.1.3 | eleccion del tipo de filtro | 1d | 2021-09-03 | 2021-09-03 | 14 |  |
| 16 | 4.1.4 | Simulacion filtro | 1d | 2021-09-06 | 2021-09-06 | 15 |  |
| 17 | 4.1.5 | estudio de componentes(hardware) | 1d | 2021-09-07 | 2021-09-07 | 16 |  |
| 18 | 4.1.6 | eleccion de componentes y nueva simulacion con valores comerciales | 1d | 2021-09-08 | 2021-09-08 | 17 |  |
| 19 | 4.2 | Estudio, eleccion y diseño circuital ADC externo | 4d | 2021-09-09 | 2021-09-14 | 12 |  |
| 20 | 4.3 | Perifericos | 3d | 2021-09-15 | 2021-09-17 | 19 |  |
| 21 | 4.4 | ARM | 5d | 2021-09-20 | 2021-09-24 | 20 |  |
| 22 | 4.5 | RTC | 1d | 2021-09-27 | 2021-09-27 | 21 |  |
| 23 | 4.6 | Estudio y diseño de reguladores de tension | 4d | 2021-09-28 | 2021-10-01 | 22 |  |
| 24 | 4.7 | **Estudio fuentes de alimentacion sistema completo** | 5d | 2021-10-04 | 2021-10-08 | 23 |  |
| 25 | 4.7.1 | Requerimientos fuente | 3d | 2021-10-04 | 2021-10-06 | 23 |  |
| 26 | 4.7.2 | Eleccion fuente a utilizar | 2d | 2021-10-07 | 2021-10-08 | 25 |  |

Notes:
- 1: Evaluar requerimientos de señales involucradas y cálculos por realizar. / Reflejar en un documento resumido los conceptos relevados.

| ID | WBS | Task | Duration | Start | Finish | Predecessors |
| --- | --- | --- | --- | --- | --- | --- |
| 27 | 5 | **PCB** | 56d | 2021-10-11 | 2021-12-27 | 11 |
| 28 | 5.1 | Eleccion de componentes | 5d | 2021-10-11 | 2021-10-15 | 11 |
| 29 | 5.2 | Estudio programa de diseño (ALTIUM) | 5d | 2021-10-11 | 2021-10-15 | 11 |
| 30 | 5.3 | estudio de diseño de placas | 5d | 2021-10-11 | 2021-10-15 | 11 |
| 31 | 5.4 | Consideraciones electromagneticas del diseño | 3d | 2021-10-11 | 2021-10-13 | 11 |
| 32 | 5.5 | Diseño de la placa | 10d | 2021-10-18 | 2021-10-29 | 28, 29, 30, 31 |
| 33 | 5.6 | Mandar a fabricar placa | 20d | 2021-11-01 | 2021-11-26 | 32 |
| 34 | 5.7 | **Armado de placa** | 11d | 2021-12-08 | 2021-12-22 | 33 |
| 35 | 5.7.1 | Soldar componentes | 5d | 2021-12-08 | 2021-12-14 |  |
| 36 | 5.7.2 | Verificar alimentaciones | 2d | 2021-12-15 | 2021-12-16 | 35 |
| 37 | 5.7.3 | programacion microcontrolador | 1d | 2021-12-22 | 2021-12-22 | 35, 51 |
| 38 | 5.8 | **Testeo** | 3d | 2021-12-23 | 2021-12-27 | 34 |
| 39 | 5.8.1 | medicion de cada una de las etapas | 1d | 2021-12-23 | 2021-12-23 |  |
| 40 | 5.8.2 | comparar medicion con lo simulado | 1d | 2021-12-24 | 2021-12-24 | 39 |
| 41 | 5.8.3 | Ajuste de parametros si es necesario | 1d | 2021-12-27 | 2021-12-27 | 39, 40 |
| 42 | 6 | **Diseño firmware** | 32d | 2021-11-29 | 2022-01-11 |  |
| 43 | 6.1 | Estudio caracteristicas microcontrolador | 5d | 2021-11-29 | 2021-12-03 | 33 |
| 44 | 6.2 | Estudio entorno de desarrollo | 3d | 2021-11-29 | 2021-12-01 | 33 |
| 45 | 6.3 | Estudio lenguaje de programacion en C | 7d | 2021-11-29 | 2021-12-07 | 33 |
| 46 | 6.4 | Estudio de librerias existentes | 7d | 2021-11-29 | 2021-12-07 | 33 |
| 47 | 6.5 | Diseño PLL digital | 4d | 2021-12-08 | 2021-12-13 | 43, 44, 45, 46 |
| 48 | 6.6 | Diseño adquisidor de señales | 5d | 2021-12-08 | 2021-12-14 | 43, 44, 45, 46 |
| 49 | 6.7 | Programacion de puertos e interfaces | 3d | 2021-11-29 | 2021-12-01 | 33 |
| 50 | 6.8 | **Diseño de comunicacion** | 15d | 2021-12-15 | 2022-01-04 | 43, 44, 45, 46 |
| 51 | 6.8.1 | **Diseño comunicación USB** | 5d | 2021-12-15 | 2021-12-21 |  |
| 52 | 6.8.1.1 | Envio de datos | 5d | 2021-12-15 | 2021-12-21 | 48 |

| ID | WBS | Task | Duration | Start | Finish | Predecessors |
| --- | --- | --- | --- | --- | --- | --- |
| 53 | 6.8.2 | **Diseño comunicación modulo SD** | 5d | 2021-12-22 | 2021-12-28 |  |
| 54 | 6.8.2.1 | Guardado informacion | 5d | 2021-12-22 | 2021-12-28 | 51 |
| 55 | 6.8.2.2 | Reescribir memoria | 5d | 2021-12-22 | 2021-12-28 | 51 |
| 56 | 6.8.3 | **Diseño comunicación modulo wifi** | 5d | 2021-12-29 | 2022-01-04 |  |
| 57 | 6.8.3.1 | Envio de datos | 5d | 2021-12-29 | 2022-01-04 | 53 |
| 58 | 6.8.3.2 | request time | 5d | 2021-12-29 | 2022-01-04 | 53 |
| 59 | 6.9 | Pre-procesamiento datos adquiridos | 5d | 2022-01-05 | 2022-01-11 | 50 |
| 60 | 6.10 | Prueba del sistema completo | 1d | 2022-01-05 | 2022-01-05 | 50 |
| 61 | 7 | **Gabinete y conexiones** | 6d | 2022-01-12 | 2022-01-19 | 27 |
| 62 | 7.1 | Esquema de conexiones y diseño del gabinete | 3d | 2022-01-12 | 2022-01-14 | 42 |
| 63 | 7.2 | Diseño e impresión en 3D de molde para el hardware | 3d | 2022-01-17 | 2022-01-19 | 62 |
| 64 | 8 | Escritura trabajo final | 20d | 2022-01-20 | 2022-02-16 | 61 |
